# Pfizer Continuum Project Plan

Schedule from MS Project, 2012-12-03 to 2013-12-05, A marks actual dates.

## Calendars

- Standard: Mon-Fri 08:00-12:00, 13:00-17:00; Sat-Sun off.

## Resources

| Resource |
| --- |
| Bala |
| Smita |
| Nelli |
| Paula |
| Hugh |
| Steve Matyas |
| Todd |
| Steve L |
| Sohal |
| Harsha |
| Naveen |
| BDA Team |
| Systems Team |
| QA3 |
| QA4 |
| QA5 |
| Vrushali |
| Max |
| VCDE |
| Anu |
| rushali |
| CTEP |
| caXchange |
| C3PR |
| caAERS |
| PSC |
| LV |
| BDA |
| "C3PR |
| Documentation |
| caGrid |
| QA |
| BAM |
| Edmond |
| NCI |
| SAIC-F |
| Web Team |
| Bill Dyer |
| CCTS Team |
| John S |
| Patrick |
| Architects |
| Christo |
| John |
| Rhett |
| Nellie |
| Steve |
| Kalpesh |
| David L |
| Stevel L |
| Kumar C |
| Gia |
| Wendy |
| Raj |
| Steve M |
| Lauren |
| Systems |
| CTRO |
| Hannes |
| SMEs |
| Gisele |
| Joe |
| CTRP Dev team |
| CBIIT |
| All |
| Analysts |
| TBD |
| Charles |
| ESST |
| Developers |
| Lisa |
| Christophe |
| Krishna |
| QA1 |
| QA2 |
| David |
| Security |
| Arch |
| Tech Leads |
| Paula B |
| Kalpana |
| KK |
| Abe |
| Kim |
| Vijay |
| CAT |
| George |
| Larry |
| Michael O |
| Resource 1 |
| Resource 2 |
| Resource3 |
| Resource 4 |
| Resource 5 |
| Gisele S |
| Dianne R |
| HR |
| NA |
| SL |
| ScenPro |
| 5AM |
| TP |
| EM |
| KE |
| JM |
| DL |
| Paul |
| Michael |
| Eilis |
| Team |
| Dev team |
| Ram P |
| NIH 508 team |
| Bryan |
| Bill D |
| Marina |
| Ye |
| Rashmi |
| Ann Wiley |
| Henry |
| QA* |
| Systems* |
| Shine |
| System |
| be |
| Jill |

## Schedule

| ID | WBS | Task | Type | Duration | Start | Finish | Predecessors | Complete | Remaining | Total slack | Free slack | Constraint | Resources | Work | Actual work |
| --- | --- | --- | --- | --- | --- | --- | --- | --- | --- | --- | --- | --- | --- | --- | --- |
| 1 | 1 | **caIntegrator** |  | 264d? | 2012-12-03 A | 2013-12-05 |  | 17% | 218.63d? | 0d |  | start no earlier than 2012-12-03 |  | 2864h | 832h |
| 2 | 1.1 | **caIntegrator 1.4.01 - patch release** |  | 15d | 2013-01-02 | 2013-01-22 |  |  |  | 227d |  |  |  | 120h |  |
| 3 | 1.1.1 | Appscan on QA |  | 6d | 2013-01-02 | 2013-01-09 |  |  |  | 227d | 0d | start no earlier than 2013-01-02 | Systems* | 48h |  |
| 4 | 1.1.2 | Appscan on Stage |  | 4d | 2013-01-10 | 2013-01-15 | 3 |  |  | 227d | 0d | start no earlier than 2012-12-05 | Systems* | 32h |  |
| 5 | 1.1.3 | QA reports and Approval |  | 2d | 2013-01-16 | 2013-01-17 | 4 |  |  | 227d | 0d |  | QA* | 16h |  |
| 6 | 1.1.4 | Prod Release |  | 3d | 2013-01-18 | 2013-01-22 | 5 |  |  | 227d |  |  | Systems* | 24h |  |
| 7 | 1.2 | **caIntegrator 1.4.1** |  | 171.5d? | 2012-12-06 A | 2013-08-02 |  | 35% | 110.78d? | 1.5d |  |  |  | 1424h | 832h |
| 8 | 1.2.1 | MILESTONE: PROJECT KICKOFF |  | 1d | 2012-12-06 A | 2012-12-06 A |  | 100% |  |  |  | start no earlier than 2012-12-06 |  |  |  |
| 9 | 1.2.2 | EPLC Project Management Plan |  | 3d | 2013-01-02 A | 2013-01-04 A |  | 100% |  |  |  | start no earlier than 2013-01-02 | Shine | 24h | 24h |
| 10 | 1.2.3 | Github Access |  | 2d | 2013-01-07 A | 2013-01-08 A |  | 100% |  |  |  | start no earlier than 2013-01-07 |  |  |  |
| 11 | 1.2.4 | USCF JBOSS issues |  | 2d | 2013-01-07 A | 2013-01-08 A |  | 100% |  |  |  | start no earlier than 2013-01-07 | Abe | 16h | 16h |
| 12 | 1.2.5 | UCSF Support (Role Based Permission) |  | 1d | 2013-01-25 A | 2013-01-25 A | 11 | 100% |  |  |  |  | Abe | 8h | 8h |
| 13 | 1.2.6 | **OSDI / Build Changes** |  | 19d? | 2013-01-09 A | 2013-02-04 A | 12 | 100% |  |  |  |  | Abe | 208h | 208h |
| 14 | 1.2.6.1 | Local copy to github, split s/w and documentation, license/copyright |  | 3d? | 2013-01-09 A | 2013-01-11 A |  | 100% |  |  |  | start no earlier than 2013-01-09 | Abe | 24h | 24h |
| 15 | 1.2.6.2 | Code Changes |  | 4d | 2013-01-22 A | 2013-01-25 A |  | 100% |  |  |  | start no earlier than 2013-01-22 | Abe | 32h | 32h |
| 16 | 1.2.6.3 | OSDI Phase 1 - complete (Pending AntHill Pro Deployment) |  | 6d | 2013-01-28 A | 2013-02-04 A | 15 | 100% |  |  |  |  | Abe | 48h | 48h |
| 17 | 1.2.7 | 508 Compliance on Dev (100%) |  | 3d | 2013-02-05 A | 2013-02-07 A | 13 | 100% |  |  |  |  | Abe | 24h | 24h |
| 18 | 1.2.8 | UCSF Support |  | 2d | 2013-02-08 A | 2013-02-11 A | 17 | 100% |  |  |  |  | Abe | 16h | 16h |
| 19 | 1.2.9 | Fix Appscan Issues |  | 10d | 2013-02-08 A | 2013-02-21 A | 18 | 100% |  |  |  |  | Abe | 80h | 80h |
| 20 | 1.2.10 | 508 compliance work |  | 4d | 2013-02-22 A | 2013-02-27 A | 19 | 100% |  |  |  |  | Abe | 32h | 32h |
| 21 | 1.2.11 | caBIO replacement changes |  | 20d | 2013-02-28 A | 2013-03-27 A | 20 | 100% |  |  |  |  | Abe | 160h | 160h |
| 22 | 1.2.12 | Documentation Changes (Context Sensitive links) |  | 2d | 2013-03-28 A | 2013-03-29 A | 21 | 100% |  |  |  |  | Abe | 16h | 16h |
| 23 | 1.2.13 | caBIO changes - for pathway search |  | 5d | 2013-04-01 A | 2013-04-05 A | 22 | 100% |  |  |  |  | Abe | 40h | 40h |
| 24 | 1.2.14 | Bug fixes and other improvements |  | 10d | 2013-04-01 A | 2013-04-12 A | 23 | 100% |  |  |  |  | Abe | 80h | 80h |
| 25 | 1.2.15 | AntHill Pro setup |  | 2d | 2013-04-15 A | 2013-04-16 A | 24 | 100% |  |  |  |  | System | 16h | 16h |
| 26 | 1.2.16 | 508 Compliance Test |  | 4d | 2013-02-22 A | 2013-04-17 A | 25 | 100% |  |  |  |  | Abe | 32h | 32h |
| 27 | 1.2.17 | Final test and Deployment on Dev (Anthill Pro) |  | 4d | 2013-04-03 A | 2013-04-09 A | 26 | 100% |  |  |  |  | Abe | 32h | 32h |
| 28 | 1.2.18 | Appscan on Dev |  | 6d | 2013-04-15 A | 2013-04-22 A | 24 | 100% |  |  |  | start no earlier than 2013-02-15 | System | 48h | 48h |
| 29 | 1.2.19 | Tag for QA |  | 2d | 2013-04-23 | 2013-04-24 | 28 |  |  | 1.5d | 0d |  | Abe | 16h |  |
| 30 | 1.2.20 | Documentation Changes |  | 3d | 2013-04-25 | 2013-04-29 | 29 |  |  | 1.5d | 0d |  | Jill | 24h |  |
| 31 | 1.2.21 | Wait for QA Team Availability |  | 10d | 2013-04-30 | 2013-05-13 | 30 |  |  | 1.5d | 0d |  |  |  |  |
| 32 | 1.2.22 | Regression Testing on QA tier |  | 15d | 2013-05-14 | 2013-06-03 | 31 |  |  | 1.5d | 0d |  | QA* | 120h |  |
| 33 | 1.2.23 | Installer Testing |  | 4d | 2013-06-04 | 2013-06-07 | 32 |  |  | 39d | 0d |  | QA* | 32h |  |
| 34 | 1.2.24 | Section 508 testing on QA tier |  | 2d | 2013-06-10 | 2013-06-11 | 33 |  |  | 39d |  |  | QA* | 16h |  |
| 35 | 1.2.25 | Appscan on QA tier |  | 15d | 2013-06-04 | 2013-06-24 | 32 |  |  | 1.5d | 0d |  | Systems* | 120h |  |
| 36 | 1.2.26 | Test Results Review and Reporting |  | 3d | 2013-06-25 | 2013-06-27 | 35 |  |  | 1.5d | 0d |  | QA* | 24h |  |
| 37 | 1.2.27 | Deploy to STAGE |  | 3d | 2013-06-28 | 2013-07-02 | 36 |  |  | 1.5d | 0d |  | Systems* | 24h |  |
| 38 | 1.2.28 | Appscan on STAGE tier |  | 15d | 2013-07-03 | 2013-07-23 | 37 |  |  | 1.5d | 0d |  | Systems* | 120h |  |
| 39 | 1.2.29 | Regression Testing on STAGE |  | 5d | 2013-07-03 | 2013-07-09 | 37 |  |  | 11.5d | 10d |  | QA* | 40h |  |
| 40 | 1.2.30 | Test Results Review and Reporting |  | 3d | 2013-07-24 | 2013-07-26 | 38, 39 |  |  | 1.5d | 0d |  | QA* | 24h |  |
| 41 | 1.2.31 | Create release artifacts |  | 2d | 2013-07-03 | 2013-07-04 | 37 |  |  | 22d |  |  |  |  |  |
| 42 | 1.2.32 | Deploy to PRODUCTION |  | 3d | 2013-07-29 | 2013-07-31 | 40 |  |  | 1.5d | 0d |  | Systems* | 24h |  |
| 43 | 1.2.33 | Update product landing page |  | 0.5d | 2013-08-01 | 2013-08-01 | 42 |  |  | 1.5d | 0d |  |  |  |  |
| 44 | 1.2.34 | QA smoke tests PRODUCTION |  | 1d | 2013-08-01 | 2013-08-02 | 42, 43 |  |  | 1.5d | 0d |  | QA* | 8h |  |
| 45 | 1.2.35 | MILESTONE: RELEASE 1.4.1 | milestone | 0d | 2013-08-02 | 2013-08-02 | 44 |  |  | 1.5d |  | start no earlier than 2012-01-09 |  |  |  |
| 46 | 1.2.36 | User Support |  | 85d | 2013-02-13 | 2013-06-11 |  |  |  | 39d |  | finish no earlier than 2013-06-11 |  |  |  |

| ID | WBS | Task | Type | Duration | Start | Finish | Predecessors | Total slack | Free slack | Constraint | Resources | Work |
| --- | --- | --- | --- | --- | --- | --- | --- | --- | --- | --- | --- | --- |
| 47 | 1.3 | **caIntegrator 1.5** |  | 161d | 2013-04-25 | 2013-12-05 |  | 0d |  |  |  | 1320h |
| 48 | 1.3.1 | Support for 1.4.1 |  | 5d | 2013-04-25 | 2013-05-01 | 29 | 7d | 0d |  | Abe | 40h |
| 49 | 1.3.2 | Tech Stack Upgrades - Spring |  | 20d | 2013-05-02 | 2013-05-29 | 48 | 7d | 0d |  | Abe | 160h |
| 50 | 1.3.3 | Bug Fixes and Improvements |  | 15d | 2013-05-30 | 2013-06-19 | 49 | 7d | 0d |  | Abe | 120h |
| 51 | 1.3.4 | CSM/UPT upgrade changes |  | 4d | 2013-06-20 | 2013-06-25 | 50 | 7d | 0d |  | Abe | 32h |
| 52 | 1.3.5 | Support for release 1.4.1 |  | 10d | 2013-06-26 | 2013-07-09 | 51 | 7d | 0d |  | Abe | 80h |
| 53 | 1.3.6 | Performance Improvements |  | 25d | 2013-07-10 | 2013-08-13 | 52 | 7d | 0d |  | Abe | 200h |
| 54 | 1.3.7 | Usability and Other Improvements Requested |  | 20d | 2013-08-14 | 2013-09-10 | 53 | 7d | 0d |  | Abe | 160h |
| 55 | 1.3.8 | Compliance (EPLC, Section 508) |  | 5d | 2013-09-11 | 2013-09-17 | 54 | 7d | 0d |  | Abe | 40h |
| 56 | 1.3.9 | MILESTONE: EPLC REVIEW (as needed) | milestone | 0d | 2013-09-17 | 2013-09-17 | 55 | 57d |  | start no earlier than 2012-01-09 |  |  |
| 57 | 1.3.10 | Appscan on Dev |  | 12d | 2013-09-18 | 2013-10-03 | 55 | 45d |  |  |  |  |
| 58 | 1.3.11 | Regression Testing on QA tier |  | 12d | 2013-09-18 | 2013-10-03 | 55 | 7d | 0d |  | QA* | 96h |
| 59 | 1.3.12 | Installer Testing |  | 4d | 2013-10-04 | 2013-10-09 | 58 | 39d | 0d |  | QA* | 32h |
| 60 | 1.3.13 | Section 508 testing on QA tier |  | 2d | 2013-10-10 | 2013-10-11 | 59 | 39d |  |  | QA* | 16h |
| 61 | 1.3.14 | Appscan on QA tier |  | 15d | 2013-10-04 | 2013-10-24 | 58 | 7d | 0d |  | Systems* | 120h |
| 62 | 1.3.15 | Test Results Review and Reporting |  | 3d | 2013-10-25 | 2013-10-29 | 61 | 7d | 0d |  | QA* | 24h |
| 63 | 1.3.16 | Deploy to STAGE |  | 1d | 2013-10-30 | 2013-10-30 | 62 | 7d | 0d |  | Systems* | 8h |
| 64 | 1.3.17 | Appscan on STAGE tier |  | 15d | 2013-10-31 | 2013-11-20 | 63 | 7d | 0d |  | Systems* | 120h |
| 65 | 1.3.18 | Regression Testing on STAGE |  | 5d | 2013-10-31 | 2013-11-06 | 63 | 17d | 10d |  | QA* | 40h |
| 66 | 1.3.19 | Test Results Review and Reporting |  | 1d | 2013-11-21 | 2013-11-21 | 64, 65 | 7d | 0d |  | QA* | 8h |
| 67 | 1.3.20 | Create release artifacts |  | 1d | 2013-10-31 | 2013-10-31 | 63 | 25d |  |  |  |  |
| 68 | 1.3.21 | Deploy to PRODUCTION |  | 2d | 2013-11-22 | 2013-11-25 | 66 | 7d | 0d |  | Systems* | 16h |
| 69 | 1.3.22 | Update product landing page |  | 0.5d | 2013-11-26 | 2013-11-26 | 68 | 7.5d |  |  |  |  |
| 70 | 1.3.23 | QA smoke tests PRODUCTION |  | 1d | 2013-11-26 | 2013-11-26 | 68 | 7d | 0d |  | QA* | 8h |
| 71 | 1.3.24 | MILESTONE: RELEASE 1.5 | milestone | 0d | 2013-11-26 | 2013-11-26 | 70 | 7d |  | start no earlier than 2012-01-09 |  |  |
| 72 | 1.3.25 | User Support |  | 88d | 2013-08-06 | 2013-12-05 | 7 | 0d |  | finish no earlier than 2013-12-05 |  |  |
| 74 | 1.4 | *QA and Systems are external resources and NOT being proposed under this contract. | milestone | 0d | 2012-12-03 | 2012-12-03 |  | 264d |  |  |  |  |
